# new Gantte2

How a schedule from MS Project changed from version to version. A marks actual dates.

## Version 1 (data date 2017-11-13, saved 2017-11-15)

Note of the change: Revert "1/10"

| ID | WBS | Task | Duration | Start | Finish | Predecessors | Complete | Total float | Constraint |
| --- | --- | --- | --- | --- | --- | --- | --- | --- | --- |
| 1 | 1 | **RPG游戏开发** | 262.5d | 2017-10-02 A | 2017-12-28 |  | 53% |  |  |
| 2 | 1.1 | **项目介绍** | 42.5d | 2017-10-02 A | 2017-10-13 A |  | 100% |  |  |
| 3 |  | 会议讨论 | 1d | 2017-10-02 A | 2017-10-02 A |  | 100% |  |  |
| 4 |  | 研究项目目标 | 22d | 2017-10-02 A | 2017-10-09 A |  | 100% |  | finish no earlier than 2017-10-06 |
| 5 |  | 项目计划调整 | 1d | 2017-10-13 A | 2017-10-13 A | 4 | 100% |  |  |
| 6 |  | 确认项目目标 | 4d | 2017-10-13 A | 2017-10-13 A | 5 | 100% |  | must finish on 2017-10-13 |
| 7 | 1.2 | **项目计划** | 57d | 2017-10-09 A | 2017-10-26 |  | 100% |  |  |
| 8 |  | 会议讨论 | 1d | 2017-10-15 A | 2017-10-15 A |  | 100% |  | finish no earlier than 2017-10-15 |
| 9 |  | wbs绘制 | 2d | 2017-10-10 A | 2017-10-10 A |  | 100% |  | start no earlier than 2017-10-09 |
| 10 |  | 甘特图绘制 | 3d | 2017-10-09 A | 2017-10-10 A |  | 100% |  | finish no earlier than 2017-10-12 |
| 11 |  | 项目计划书编写 | 32d | 2017-10-09 A | 2017-10-17 A | 6 | 100% |  | must finish on 2017-10-18 |
| 12 |  | 项目计划书修订 | 1d? | 2017-10-18 A | 2017-10-18 A | 11 | 100% |  |  |
| 13 |  | 项目计划ppt | 24d | 2017-10-17 A | 2017-10-24 A |  | 100% |  | must finish on 2017-10-24 |
| 14 |  | 项目计划ppt修订 | 1d? | 2017-10-25 A | 2017-10-25 A | 13 | 100% |  |  |
| 15 |  | 甘特图调整 | 1d? | 2017-10-25 A | 2017-10-25 A | 10 | 100% |  |  |
| 16 |  | 提交项目计划 | 4d | 2017-10-25 A | 2017-10-25 A | 8, 9, 10, 11, 12, 13, 14, 15 | 100% |  | must finish on 2017-10-25 |
| 17 | 1.3 | **可行性分析** | 66.5d | 2017-10-18 A | 2017-11-08 |  | 100% |  |  |
| 18 |  | 会议讨论 | 1d | 2017-10-20 A | 2017-10-20 A |  | 100% |  | finish no earlier than 2017-10-20 |
| 19 |  | 可行性分析报告 | 24d | 2017-10-18 A | 2017-10-25 A |  | 100% |  | start no earlier than 2017-10-18 |
| 20 |  | 可行性分析修订 | 20d | 2017-10-31 A | 2017-11-06 A | 19 | 100% |  | finish no earlier than 2017-10-31 |
| 21 |  | 甘特图修改 | 1d? | 2017-11-07 A | 2017-11-07 A | 15 | 100% |  |  |
| 22 |  | 提交报告 | 4d | 2017-11-07 A | 2017-11-07 A | 21, 18, 19, 20 | 100% |  | start no earlier than 2017-11-01 |
| 23 | 1.4 | **需求分析** | 135.5d? | 2017-10-02 A | 2017-11-15 |  | 82% | 124.5d |  |
| 25 |  | 会议讨论 | 1d | 2017-10-26 A | 2017-10-26 A |  | 100% |  | finish no earlier than 2017-10-26 |
| 26 |  | 需求分析报告 | 20d | 2017-11-05 A | 2017-11-10 A |  | 100% |  | finish no earlier than 2017-11-11 |
| 27 |  | 数据字典定义 | 1d? | 2017-11-13 A | 2017-11-13 A |  | 100% |  |  |
| 28 |  | ER图绘制 | 1d? | 2017-11-13 A | 2017-11-13 A |  | 100% |  |  |
| 29 |  | 需求分析修订 | 8.5d | 2017-11-10 A | 2017-11-15 | 26 |  | 124.5d | start no earlier than 2017-11-10 |
| 30 |  | 界面原型设计 | 20d | 2017-11-05 A | 2017-11-10 A |  | 100% |  | finish no earlier than 2017-11-11 |
| 31 |  | 需求分析ppt | 12d | 2017-11-07 A | 2017-11-10 A |  | 100% |  | finish no earlier than 2017-11-11 |
| 32 |  | 用户代表确立 | 1d? | 2017-11-13 A | 2017-11-13 A |  | 100% |  |  |
| 33 |  | 用户代表采访 | 1d? | 2017-11-13 A | 2017-11-13 A | 32 | 100% |  |  |
| 34 |  | 界面原型修订 | 0.5d? | 2017-11-13 | 2017-11-13 | 33, 30 |  |  |  |
| 35 |  | 需求分析ppt修订 | 2d | 2017-11-13 | 2017-11-13 | 31 |  |  |  |
| 36 |  | 提交需求分析 | 15d | 2017-11-08 A | 2017-11-15 | 29, 30, 35 | 80% | 124.5d | finish no earlier than 2017-11-11 |
| 37 | 1.5 | **项目设计** | 72d | 2017-11-09 A | 2017-12-04 |  | 7% |  |  |
| 38 |  | 人机界面设计 | 40d | 2017-11-09 A | 2017-11-22 |  | 20% |  | must finish on 2017-11-22 |
| 39 |  | 结构设计 | 44d | 2017-11-16 | 2017-11-30 |  |  |  | must finish on 2017-11-30 |
| 40 |  | 过程设计 | 28d | 2017-11-23 | 2017-12-01 |  |  |  | must finish on 2017-12-01 |
| 41 |  | 提交项目设计 | 4d | 2017-12-04 | 2017-12-04 |  |  |  | must finish on 2017-12-04 |
| 42 | 1.6 | **项目测试** | 74d? | 2017-11-30 | 2017-12-27 | 37 |  | 0d |  |
| 43 |  | 编码 | 37d | 2017-11-30 | 2017-12-13 |  |  |  | finish no earlier than 2017-12-13 |
| 44 |  | 软件测试 | 37d | 2017-12-14 | 2017-12-27 | 43 |  |  | finish no earlier than 2017-12-19 |
| 45 |  | 提交项目测试 | 1d? | 2017-12-04 | 2017-12-04 |  |  |  |  |
| 46 | 1.7 | **项目验收** | 1d? | 2017-12-20 | 2017-12-20 | 42 |  |  |  |
| 47 |  | 验收ppt准备 | 1d? | 2017-12-20 | 2017-12-20 |  |  |  |  |
| 48 |  | app验收 | 1d? | 2017-12-20 | 2017-12-20 |  |  |  |  |
| 49 | 1.8 | **项目总结** | 1d? | 2017-12-20 | 2017-12-20 | 46 |  |  |  |
| 50 |  | 项目总结文档书写 | 1d? | 2017-12-20 | 2017-12-20 |  |  |  |  |
| 51 |  | 项目总结ppt书写 | 1d? | 2017-12-20 | 2017-12-20 |  |  |  |  |

## Version 2 (data date 2017-11-13, saved 2018-01-05)

Note of the change: Revert "2018/1/10 评审ppt修改"

Last finish 2017-12-28 → 2018-01-11 (+14d). Complete tasks 26 → 52.

Added:

| ID | Task | Duration | Start | Finish | Predecessors | Constraint | Resources |
| --- | --- | --- | --- | --- | --- | --- | --- |
| 37 | 会议讨论 | 0d? | 2017-11-17 A | 2017-11-17 A |  | finish no earlier than 2017-11-09 |  |
| 39 | 会议讨论 | 0d? | 2017-11-24 A | 2017-11-24 A |  | start no earlier than 2017-11-24 |  |
| 41 | 会议讨论 | 0d? | 2017-11-30 A | 2017-11-30 A | 40 |  |  |
| 44 | **实现** | 39.5d? | 2017-11-30 A | 2017-12-13 A |  |  |  |
| 45 | 代码规范编写 | 3.5d | 2017-11-30 A | 2017-11-30 A |  | finish no earlier than 2017-12-13 | 马思旖; 叶港归; 周皙昊 |
| 47 | 会议讨论 | 1d? | 2017-12-05 A | 2017-12-05 A |  | start no earlier than 2017-12-04 |  |
| 48 | 会议讨论 | 1d? | 2017-12-11 A | 2017-12-11 A |  | start no earlier than 2017-12-09 |  |
| 49 | 用户手册书写 | 1d? | 2017-12-12 A | 2017-12-12 A |  | start no earlier than 2017-12-11 |  |
| 50 | 代码走查 | 1d? | 2017-12-13 A | 2017-12-13 A |  | start no earlier than 2017-12-12 |  |
| 52 | 测试报告计划编写 | 40d? | 2017-12-14 A | 2017-12-25 A |  | finish no earlier than 2017-12-25 |  |
| 53 | 测试用例编写 | 40d? | 2017-12-14 A | 2017-12-25 A |  | finish no earlier than 2017-12-25 |  |
| 55 | 会议讨论 | 1d? | 2017-12-18 A | 2017-12-18 A |  | start no earlier than 2017-12-17 |  |
| 57 | 会议讨论 | 1d? | 2017-12-25 A | 2017-12-25 A |  | start no earlier than 2017-12-23 |  |
| 58 | 项目计划修改 | 1d | 2017-12-31 A | 2017-12-31 A |  |  | 马思旖 |
| 59 | 概要设计修改 | 1d | 2018-01-02 A | 2018-01-02 A |  |  | 马思旖 |
| 60 | 详细设计修改 | 1d | 2018-01-03 A | 2018-01-03 A |  |  | 马思旖 |
| 61 | 测试评审 | 0d? | 2018-01-06 | 2018-01-06 |  | start no earlier than 2018-01-06 |  |

Changed:

| ID | Task | Start | Finish | Duration | Complete | Total float | Predecessors | Other |
| --- | --- | --- | --- | --- | --- | --- | --- | --- |
| 1 | **RPG游戏开发** |  | 2017-12-28 → 2018-01-11 (+14d) | 262.5d → 318.5d | 53% → 85% |  |  |  |
| 4 | 研究项目目标 |  | 2017-10-09 A → 2017-10-04 A (-5d) | 22d → 10d |  |  |  |  |
| 12 | 项目计划书修订 |  |  | 1d? → 1d |  |  |  |  |
| 14 | 项目计划ppt修订 |  |  | 1d? → 1d |  |  |  |  |
| 15 | 甘特图调整 |  |  | 1d? → 1d |  |  |  |  |
| 21 | 甘特图修改 |  |  | 1d? → 1d |  |  |  |  |
| 23 | **需求分析** | 2017-10-02 A → 2017-10-26 A (+24d) | 2017-11-15 A | 135.5d? → 56.5d | 82% → 100% | 124.5d → none |  |  |
| 26 | 数据字典定义 |  |  | 1d? → 1d |  |  |  |  |
| 27 | ER图绘制 |  |  | 1d? → 1d |  |  |  |  |
| 28 | 需求分析修订 |  | 2017-11-15 → 2017-11-14 A (-1d) | 8.5d → 7.5d | 0% → 100% | 124.5d → none |  |  |
| 31 | 用户代表确立 |  |  | 1d? → 1d |  |  |  |  |
| 32 | 用户代表采访 |  |  | 1d? → 1d |  |  |  |  |
| 33 | 界面原型修订 | 2017-11-13 A | 2017-11-13 A | 0.5d? → 0.5d | 0% → 100% |  |  |  |
| 34 | 需求分析ppt修订 | 2017-11-13 → 2017-11-10 A (-3d) | 2017-11-13 → 2017-11-10 A (-3d) |  | 0% → 100% |  |  |  |
| 35 | 提交需求分析 |  | 2017-11-15 A |  | 80% → 100% | 124.5d → none | 28, 29, 34 → 28, 29 |  |
| 36 | **项目设计** |  | 2017-12-04 → 2017-12-05 A (+1d) | 72d → 78.5d | 7% → 100% |  |  |  |
| 38 | 总体设计 |  | 2017-11-22 A |  | 20% → 100% |  |  | was named 人机界面设计 |
| 40 | 详细设计 | 2017-11-16 A | 2017-11-30 A |  | 0% → 100% |  |  | was named 结构设计 |
| 42 | 设计ppt | 2017-11-23 A | 2017-12-01 A | 28d → 30.5d | 0% → 100% |  |  | was named 过程设计 |
| 43 | 提交项目设计 | 2017-12-04 → 2017-12-05 A (+1d) | 2017-12-04 → 2017-12-05 A (+1d) | 4d → 1d | 0% → 100% |  |  | constraint must finish on 2017-12-04 → start no earlier than 2017-12-05 |
| 46 | 编码 | 2017-11-30 A | 2017-12-13 → 2017-12-12 A (-1d) | 37d → 39.5d | 0% → 100% |  |  |  |
| 51 | **项目测试** | 2017-11-30 → 2017-12-14 A (+14d) | 2017-12-27 → 2018-01-06 (+10d) | 74d? → 80d? | 0% → 99% | 0d → -12d |  |  |
| 54 | 软件测试 | 2017-12-14 → 2017-12-15 A (+1d) | 2017-12-27 → 2017-12-25 A (-2d) | 37d → 36.5d | 0% → 100% |  | 46 → 46, 45 | constraint finish no earlier than 2017-12-19 → start no earlier than 2017-12-15 |
| 56 | 提交项目测试 | 2017-12-04 → 2017-12-25 A (+21d) | 2017-12-04 → 2017-12-25 A (+21d) | 1d? → 1d | 0% → 100% |  |  |  |
| 62 | **项目验收** | 2017-12-20 → 2017-12-27 (+7d) | 2017-12-20 → 2018-01-10 (+21d) | 1d? → 48.5d |  |  | 51 → 44, 51 |  |
| 63 | 验收ppt准备 | 2017-12-20 → 2017-12-28 (+8d) | 2017-12-20 → 2018-01-09 (+20d) | 1d? → 36.5d |  |  |  |  |
| 64 | app验收 | 2017-12-20 → 2018-01-01 (+12d) | 2017-12-20 → 2018-01-10 (+21d) | 1d? → 32.5d |  |  |  |  |
| 65 | **项目总结** | 2017-12-20 → 2018-01-04 (+15d) | 2017-12-20 → 2018-01-10 (+21d) | 1d? → 24.5d |  |  |  |  |
| 66 | 项目总结文档书写 | 2017-12-20 → 2018-01-04 (+15d) | 2017-12-20 → 2018-01-08 (+19d) | 1d? → 12.5d |  |  |  |  |
| 67 | 项目总结ppt书写 | 2017-12-20 → 2018-01-09 (+20d) | 2017-12-20 → 2018-01-10 (+21d) | 1d? → 8.5d |  |  |  |  |

## Version 3 (data date 2017-11-13, saved 2018-01-10)

Note of the change: 总结2.0

Last finish stays 2018-01-11. Complete tasks 52 → 79.

Added:

| ID | Task | Duration | Start | Finish | Predecessors | Constraint | Resources |
| --- | --- | --- | --- | --- | --- | --- | --- |
| 20 | 甘特图修改 | 1d | 2017-11-04 A | 2017-11-04 A | 15, 19 |  | 叶港归 |
| 39 | HIPO图绘制 | 1d | 2017-11-09 A | 2017-11-09 A |  |  | 周皙昊 |
| 45 | 可行性分析报告修订 | 1d | 2017-12-03 A | 2017-12-03 A |  | start no earlier than 2017-12-02 | 马思旖; 周皙昊 |
| 46 | 需求分析报告修订 | 1d | 2017-12-03 A | 2017-12-03 A |  | start no earlier than 2017-12-02 | 马思旖; 叶港归 |
| 47 | 设计ppt修订 | 1d | 2017-12-03 A | 2017-12-03 A |  | start no earlier than 2017-12-03 | 马思旖 |
| 51 | 游戏素材寻找 | 28d | 2017-11-30 A | 2017-12-06 A |  | finish no earlier than 2017-12-06 | 叶港归; 周皙昊 |
| 54 | 甘特图调整 | 1d | 2017-12-07 A | 2017-12-07 A |  | start no earlier than 2017-12-06 | 马思旖 |
| 62 | 评审ppt制作 | 28d | 2017-12-18 A | 2017-12-24 A |  | start no earlier than 2017-12-17 | 马思旖 |
| 64 | 甘特图调整 | 2d | 2017-12-19 A | 2017-12-20 A |  | finish no earlier than 2017-12-20 | 马思旖 |
| 65 | 用户回访1.0 | 1d | 2017-12-19 A | 2017-12-19 A |  | start no earlier than 2017-12-18 | 马思旖 |
| 66 | 需求分析报告修订 | 1d | 2017-12-20 A | 2017-12-21 A |  | start no earlier than 2017-12-02 | 马思旖; 叶港归 |
| 67 | 可行性分析报告修订 | 1d | 2017-12-20 A | 2017-12-21 A |  | start no earlier than 2017-12-02 | 马思旖; 周皙昊 |
| 68 | 用户手册修订 | 1d | 2017-12-23 A | 2017-12-23 A |  | start no earlier than 2017-12-22 | 马思旖 |
| 71 | NPC属性调整 | 2d | 2017-12-27 A | 2017-12-29 A |  | finish no earlier than 2017-12-31 | 周皙昊 |
| 75 | 评审ppt修改 | 1d | 2018-01-05 A | 2018-01-06 A |  | start no earlier than 2017-12-17 | 马思旖 |
| 78 | 项目计划文档修订 | 1d | 2018-01-06 A | 2018-01-07 A |  | start no earlier than 2017-12-02 | 叶港归 |
| 79 | 测试用例文档修订 | 1d | 2018-01-06 A | 2018-01-07 A |  | start no earlier than 2017-12-02 | 叶港归 |
| 80 | 可行性分析报告修订 | 1d | 2018-01-06 A | 2018-01-07 A |  | start no earlier than 2017-12-02 | 马思旖; 周皙昊 |
| 81 | 用户回访2.0 | 1d | 2018-01-08 A | 2018-01-08 A |  | start no earlier than 2018-01-07 | 马思旖 |
| 82 | 需求分析修订 | 1d | 2018-01-07 A | 2018-01-07 A |  | start no earlier than 2018-01-06 | 马思旖; 周皙昊 |
| 85 | 黑盒测试修订 | 1d | 2018-01-07 A | 2018-01-07 A |  | start no earlier than 2018-01-06 | 马思旖; 叶港归 |
| 86 | ppt制作 | 1d | 2018-01-07 A | 2018-01-07 A |  | start no earlier than 2018-01-06 | 马思旖 |
| 87 | 用户手册文档修订 | 1d | 2018-01-08 A | 2018-01-09 A |  | start no earlier than 2017-12-02 | 马思旖; 周皙昊 |
| 88 | 会议讨论 | 1d | 2018-01-09 A | 2018-01-09 A |  | start no earlier than 2018-01-08 | 周皙昊 |
| 89 | 评审 | 1d | 2018-01-10 | 2018-01-10 |  | start no earlier than 2018-01-09 | 马思旖; 叶港归; 周皙昊 |

Removed: 65 项目总结; 66 项目总结文档书写; 67 项目总结ppt书写

Changed:

| ID | Task | Start | Finish | Duration | Complete | Total float | Predecessors | Other |
| --- | --- | --- | --- | --- | --- | --- | --- | --- |
| 1 | **RPG游戏开发** |  |  | 318.5d → 338.5d | 85% → 99% |  |  |  |
| 21 | 可行性分析修订 |  |  |  |  |  | 19 → 20 |  |
| 23 | 提交报告 |  |  |  |  |  | 22, 18, 19, 21 → 22, 18, 19, 21, 20 |  |
| 37 | **项目设计** |  | 2017-12-05 A → 2017-12-06 (+1d) | 78.5d → 87d |  |  |  |  |
| 38 | 会议讨论 |  | 2017-11-17 A → 2017-11-20 A (+3d) | 0d? → 1d |  |  |  | resources none → 周皙昊 |
| 40 | 总体设计 |  | 2017-11-22 A → 2017-11-13 A (-9d) | 40d → 10d |  |  |  |  |
| 41 | 会议讨论 | 2017-11-24 A → 2017-11-27 A (+3d) | 2017-11-24 A → 2017-11-27 A (+3d) | 0d? → 1d |  |  |  | resources none → 周皙昊 |
| 43 | 会议讨论 | 2017-11-30 A → 2017-12-01 A (+1d) | 2017-11-30 A → 2017-12-01 A (+1d) | 0d? → 1d |  |  |  | resources none → 周皙昊 |
| 44 | 设计ppt | 2017-11-23 A → 2017-11-29 A (+6d) | 2017-12-01 A → 2017-12-03 A (+2d) | 30.5d → 20.5d |  |  |  | constraint must finish on 2017-12-01 → start no earlier than 2017-11-29 |
| 49 | **实现** |  |  | 39.5d? → 51.5d? |  |  |  |  |
| 53 | 会议讨论 |  |  | 1d? → 1d |  |  |  | resources none → 周皙昊 |
| 55 | 会议讨论 |  |  | 1d? → 1d |  |  |  | resources none → 周皙昊 |
| 56 | 用户手册书写 |  |  | 1d? → 1d |  |  |  | resources none → 马思旖 |
| 57 | 代码走查 |  |  | 1d? → 1d |  |  |  | resources none → 马思旖; 叶港归; 周皙昊 |
| 58 | **项目测试** |  | 2018-01-06 → 2018-01-07 A (+1d) | 80d? → 90.5d | 99% → 100% | -12d → none |  |  |
| 59 | 测试报告计划编写 |  |  | 40d? → 40d |  |  |  | resources none → 叶港归 |
| 60 | 测试用例编写 |  |  | 40d? → 40d |  |  |  | resources none → 叶港归 |
| 63 | 会议讨论 |  |  | 1d? → 1d |  |  |  | resources none → 周皙昊 |
| 70 | 会议讨论 |  |  | 1d? → 1d |  |  |  | resources none → 周皙昊 |
| 74 | 详细设计修改 |  |  |  |  |  |  | resources 马思旖 → 马思旖; 叶港归 |
| 76 | 测试评审 | 2018-01-06 → 2018-01-07 A (+1d) | 2018-01-06 → 2018-01-07 A (+1d) | 0d? → 1d | 0% → 100% | -28d → none |  | resources none → 马思旖; 叶港归; 周皙昊 |
| 77 | **项目验收** | 2017-12-27 → 2018-01-06 A (+10d) |  | 48.5d → 20.5d | 0% → 92% |  |  |  |
| 83 | 详细设计修订 | 2017-12-28 → 2018-01-07 A (+10d) | 2018-01-09 → 2018-01-07 A (-2d) | 36.5d → 1d | 0% → 100% |  |  | was named 验收ppt准备 |
| 84 | 总体设计修订 | 2018-01-01 → 2018-01-07 A (+6d) | 2018-01-10 → 2018-01-07 A (-3d) | 32.5d → 1d | 0% → 100% |  |  | was named app验收; resources 叶港归; 周皙昊 → 马思旖 |
